Schedule from Planner, 2018-12-17 to 2019-02-26.

## Calendars

- Default: Mon-Fri 08:00-12:00, 13:00-17:00; Sat-Sun off.

## Resources

| Resource |
| --- |
| Bernardo |
| nobody |

## Schedule

| ID | WBS | Task | Type | Duration | Start | Finish | Predecessors | Complete | Constraint | Work |
| --- | --- | --- | --- | --- | --- | --- | --- | --- | --- | --- |
| 1 | 1 | **Modelo dinâmico do motor** |  |  | 2018-12-17 | 2019-01-25 |  |  |  | 320h |
| 2 | 1.1 | Elaborar formulação teórica |  |  | 2018-12-17 | 2018-12-28 |  |  |  | 80h |
| 3 | 1.2 | **Implementação computacional** |  |  | 2018-12-31 | 2019-01-11 |  |  |  | 80h |
| 4 | 1.2.1 | Definir arquitetura |  |  | 2018-12-31 | 2019-01-04 | 2 |  |  | 40h |
| 5 | 1.2.2 | Implementar modelo |  |  | 2019-01-07 | 2019-01-11 | 4 |  |  | 40h |
| 6 | 1.3 | **Testes e estimativa de parâmetros** |  |  | 2018-12-31 | 2019-01-18 |  |  |  | 120h |
| 7 | 1.3.1 | Definir programa de testes |  |  | 2018-12-31 | 2019-01-04 | 2 |  | start no earlier than 2018-09-30 | 40h |
| 8 | 1.3.2 | Preparar testes |  |  | 2019-01-07 | 2019-01-11 | 7 |  |  | 40h |
| 9 | 1.3.3 | Realizar testes |  |  | 2019-01-14 | 2019-01-18 | 8 |  |  | 40h |
| 10 | 1.4 | Obter parâmetros do motor através do pós-processamento de dados dos testes |  |  | 2019-01-21 | 2019-01-25 | 9, 5 |  |  | 40h |
| 11 | 1.5 | Primeira versão do modelo do motor | milestone | 0d | 2019-01-25 | 2019-01-25 | 10 |  |  |  |
| 12 | 2 | **FADEC** |  |  | 2018-12-17 | 2019-02-26 |  |  |  | 440h |
| 13 | 2.1 | Definir entradas e saídas do sistema |  |  | 2018-12-17 | 2018-12-21 |  |  |  | 40h |
| 14 | 2.2 | Elaborar formulação teórica do controlador |  |  | 2018-12-24 | 2018-12-28 | 13 |  |  | 40h |
| 15 | 2.3 | **Implementação em microcontrolador** |  |  | 2018-12-17 | 2019-01-10 |  |  |  | 80h |
| 16 | 2.3.1 | Definir hardware a ser utilizado |  |  | 2018-12-17 | 2018-12-17 |  |  |  | 8h |
| 17 | 2.3.2 | Definir estrutura do código |  |  | 2018-12-31 | 2019-01-03 | 16, 14 |  |  | 32h |
| 18 | 2.3.3 | Implementar controlador |  |  | 2019-01-04 | 2019-01-10 | 17 |  |  | 40h |
| 19 | 2.4 | **Testes secos (simulados)** |  |  | 2018-12-31 | 2019-02-12 |  |  |  | 160h |
| 20 | 2.4.1 | Integrar o código do controlador com o modelo do motor |  |  | 2019-01-11 | 2019-01-17 | 18 |  |  | 40h |
| 21 | 2.4.2 | Definir programa de testes |  |  | 2018-12-31 | 2019-01-01 | 14 | 100% |  | 16h |
| 22 | 2.4.3 | Codificar e realizar testes |  |  | 2019-01-18 | 2019-01-22 | 20, 21 |  |  | 24h |
| 23 | 2.4.4 | Obter ganhos do controlador através do pós-processamento de dados dos testes secos |  |  | 2019-01-23 | 2019-01-29 | 22 |  |  | 40h |
| 24 | 2.4.5 | Simular testes molhados (hardware in the loop) |  |  | 2019-02-06 | 2019-02-12 | 26 |  |  | 40h |

| ID | WBS | Task | Type | Duration | Start | Finish | Predecessors | Work |
| --- | --- | --- | --- | --- | --- | --- | --- | --- |
| 25 | 2.5 | **Testes molhados (com o motor)** |  |  | 2019-01-30 | 2019-02-26 |  | 120h |
| 26 | 2.5.1 | Definir programa de testes |  |  | 2019-01-30 | 2019-02-05 | 23, 21 | 40h |
| 27 | 2.5.2 | Preparar testes |  |  | 2019-02-13 | 2019-02-19 | 24, 26 | 40h |
| 28 | 2.5.3 | Realizar testes |  |  | 2019-02-20 | 2019-02-26 | 27 | 40h |
| 29 | 2.6 | FADEC pronto e validado | milestone | 0d | 2019-02-26 | 2019-02-26 | 28 |  |
